# Actividad 10 de junio 2022

Schedule from MS Project, 2022-06-14 to 2022-07-22, costs in $.

## Calendars

- Estándar: Mon-Fri 09:00-13:00, 15:00-19:00; Sat-Sun off.

## Resources

| Resource | Unit | Rate |
| --- | --- | --- |
| AY |  | 9166.62 |
| OF |  | 13750 |
| RETRO |  | 100000 |
| VOLQUETA |  | 70000 |
| RANA |  | 10000 |
| VIBRADOR |  | 8750 |
| TROMPO |  | 18750 |
| RECEBO | m3 | 45000 |
| CEMENTO | Bulto | 27000 |
| TRITURADO | m3 | 90000 |
| MIXTO | m3 | 60000 |
| TABLA BURRA | un | 37000 |
| HIERRO | Kg | 6100 |
| ALAMBRE | Kg | 6100 |
| ARENA | m3 | 70000 |
| SIKA | Galón | 150000 |
| TABLETA | m2 | 40000 |
| PEGALISTO | Kg | 1500 |
| BLINDABOQUILLA | Caja | 50000 |
| MALLA NO. 4 | un | 95000 |
| SIDAKUR | un | 250000 |
| ACCESORIOS |  |  |
| FILTROS |  |  |
| BOMBAS |  |  |
| ELEMENTOS DE ASEO |  |  |
| ACCESORIOS BOMBA |  |  |

## Schedule

| ID | WBS | Task | Type | Duration | Start | Finish | Predecessors | Total slack | Resources | Work | Cost |
| --- | --- | --- | --- | --- | --- | --- | --- | --- | --- | --- | --- |
| 1 | 1 | **PISCINA** |  | 29d | 2022-06-14 | 2022-07-22 |  | 0d |  | 976h | 43,406,814 |
| 2 | 1.1 | INICIO | milestone | 0d | 2022-06-14 | 2022-06-14 |  | 0d |  |  |  |
| 3 | 1.2 | EXCAVACIÓN |  | 1d | 2022-06-14 | 2022-06-14 | 2 | 0d | AY [200%]; RETRO; VOLQUETA | 32h | 1,506,666 |
| 4 | 1.3 | RELLENO |  | 2d | 2022-06-15 | 2022-06-16 | 3 | 0d | AY [200%]; OF [200%]; RANA; RECEBO [18 m3] | 80h | 1,703,332 |
| 5 | 1.4 | PLACA DE FONDO |  | 5d | 2022-06-17 | 2022-06-23 | 4 | 0d | AY [200%]; OF [200%]; VIBRADOR [20%]; TROMPO [20%]; CEMENTO [70 Bulto]; TRITURADO [6 m3]; MIXTO [6 m3]; TABLA BURRA [6 un]; HIERRO [1010 Kg]; ALAMBRE [50 Kg] | 176h | 11,531,330 |
| 6 | 1.5 | TUBERIA, ACCESORIOS |  | 2d | 2022-06-24 | 2022-06-27 | 5 | 0d | AY [200%]; OF [200%]; ACCESORIOS [0.1%] | 64h | 2,233,332 |
| 7 | 1.6 | MUROS, ESPEJO |  | 5d | 2022-06-28 | 2022-07-04 | 6 | 0d | AY [200%]; OF [200%]; VIBRADOR [20%]; TROMPO [20%]; HIERRO [580 Kg]; ALAMBRE [25 Kg]; TRITURADO [6 m3]; MIXTO [6 m3]; CEMENTO [50 Bulto] | 176h | 7,993,830 |
| 8 | 1.7 | PAÑETES |  | 3d | 2022-07-05 | 2022-07-07 | 7 | 0d | AY [200%]; OF [200%]; ARENA [3 m3]; CEMENTO [15 Bulto]; SIKA [2 Galón] | 96h | 2,014,998 |
| 9 | 1.8 | ENCHAPE |  | 4d | 2022-07-08 | 2022-07-13 | 8 | 0d | AY [200%]; OF [200%]; TABLETA [90 m2]; PEGALISTO [450 Kg]; BLINDABOQUILLA [5 Caja] | 128h | 5,991,664 |
| 10 | 1.9 | PLAYA |  | 5d | 2022-07-14 | 2022-07-20 | 9 | 0d | AY [200%]; OF [200%]; RANA [20%]; RECEBO [9 m3]; ARENA [6 m3]; CEMENTO [60 Bulto]; TRITURADO [6 m3]; MALLA NO. 4 [6 un]; TROMPO [20%] | 176h | 5,618,330 |
| 11 | 1.10 | DOTACIÓN, EQUIPOS |  | 1d | 2022-07-21 | 2022-07-21 | 10 | 0d | AY [200%]; OF [200%]; FILTROS [0.1%]; BOMBAS [0.1%]; SIDAKUR [1 un]; ACCESORIOS BOMBA [0.1%] | 32h | 4,366,666 |
| 12 | 1.11 | ASEO |  | 1d | 2022-07-22 | 2022-07-22 | 11 | 0d | AY [200%]; ELEMENTOS DE ASEO [0.1%] | 16h | 446,666 |
| 13 | 1.12 | FIN | milestone | 0d | 2022-07-22 | 2022-07-22 | 12 | 0d |  |  |  |
