# losa 2022 3

Schedule from MS Project, 2022-06-13 to 2022-06-24, costs in $.
Toshiba

## Calendars

- Estándar: Mon-Sat 07:00-12:00, 13:00-16:00; Sun off. Exceptions (off unless hours are given): 2022-06-20 (F).

## Resources

| Resource | Unit | Rate |
| --- | --- | --- |
| OF |  | 13750 |
| AY |  | 9166.67 |
| VIBRADOR |  | 8750 |
| PLUMA |  | 22500 |
| TROMPO |  | 18750 |
| ALAMBRE | kg | 6100 |
| HIERRO | kg | 6000 |
| BLOQUE | un | 1400 |
| CEMENTO | bultos | 28000 |
| GRAVA | M3 | 85000 |
| ARENA | M3 | 65000 |
| FORMALETA |  |  |
| CUADRILLA FUNDIDA |  |  |

## Schedule

| ID | WBS | Task | Type | Duration | Start | Finish | Predecessors | Total slack | Resources | Work | Cost |
| --- | --- | --- | --- | --- | --- | --- | --- | --- | --- | --- | --- |
| 1 | 1 | **PLACA ALIGERADA** |  | 10d | 2022-06-13 | 2022-06-24 |  | 0d |  | 576h | 55,342,999.88 |
| 2 | 1.1 | Inicio | milestone | 0d | 2022-06-13 | 2022-06-13 |  | 0d |  |  |  |
| 3 | 1.2 | Formaleta |  | 4d | 2022-06-13 | 2022-06-16 | 2 | 0d | OF [300%]; AY [300%]; FORMALETA [0.1%] | 192h | 4,899,999.96 |
| 4 | 1.3 | Refuerzo |  | 4d | 2022-06-17 | 2022-06-22 | 3 | 0d | OF [400%]; AY [400%]; HIERRO [3800 kg]; ALAMBRE [80 kg] | 256h | 26,221,333.28 |
| 5 | 1.4 | Bloque |  | 1d | 2022-06-23 | 2022-06-23 | 4 | 0d | OF; AY [400%]; BLOQUE [2200 un] | 40h | 3,483,333.32 |
| 6 | 1.5 | Concreto |  | 1d | 2022-06-24 | 2022-06-24 | 5 | 0d | OF [400%]; AY [400%]; PLUMA; TROMPO; VIBRADOR; CEMENTO [400 bultos]; ARENA [66 M3]; GRAVA [39 M3]; CUADRILLA FUNDIDA [0.1%] | 88h | 20,738,333.32 |
| 7 | 1.6 | Fin | milestone | 0d | 2022-06-24 | 2022-06-24 | 6 | 0d |  |  |  |
